# Obra Itu - Baias Fazenda Santa Mônica

Schedule from MS Project, 2026-06-08 to 2026-10-08, A marks actual dates.

## Calendars

- Padrão: Mon-Fri 08:00-12:00, 13:00-17:00; Sat-Sun off.

## Resources

| Resource |
| --- |
| Ana |
| Equipe Veks |
| Paulo |
| João 3o |
| Priscila |
| Alan |
| Guilherme |
| Fazenda |
| Veks |
| AJR |
| AJR (Veks) |

## Schedule

| ID | WBS | Task | Type | Duration | Start | Finish | Predecessors | Complete | Remaining | Total slack | Free slack | Constraint | Resources | Work | Actual work |
| --- | --- | --- | --- | --- | --- | --- | --- | --- | --- | --- | --- | --- | --- | --- | --- |
| 1 | 1 | **Mobilização** |  | 18d | 2026-06-08 A | 2026-07-01 |  | 71% | 5.14d | 71d |  |  |  | 112h | 80h |
| 2 | 1.1 | Estudo de Solo SPT |  | 1d | 2026-06-11 A | 2026-06-11 A |  | 100% |  |  |  |  | João 3o | 8h | 8h |
| 3 | 1.2 | Execução de projetos LSF, Telhado, Piso, Baldrame, Fundação para Pilares de Madeira |  | 9d | 2026-06-08 A | 2026-06-18 A |  | 100% |  |  |  |  | Priscila | 72h | 72h |
| 4 | 1.3 | Mobilização Equipe |  | 1d | 2026-06-29 | 2026-06-29 |  |  |  | 73d |  | start no earlier than 2026-06-29 | Veks | 8h |  |
| 5 | 1.4 | Fazenda: Nivelamento dos Platôs | manual | 3d | 2026-06-29 | 2026-07-01 |  |  |  |  |  |  | Fazenda | 24h |  |
| 6 | 2 | **Marcação de Obra** |  | 1d | 2026-06-30 A | 2026-06-30 A |  | 100% |  |  |  |  |  | 8h | 8h |
| 7 | 2.1 | Execução de Gabarito |  | 1d | 2026-06-30 A | 2026-06-30 A |  | 100% |  |  |  | start no earlier than 2026-06-30 | Veks | 8h | 8h |
| 8 | 3 | **Baias** |  | 70d | 2026-06-29 A | 2026-10-02 |  | 3% | 67.66d | 4d |  |  |  | 2800h | 112h |
| 9 | 3.1 | **Galpão B** |  | 58d | 2026-06-29 A | 2026-09-16 |  | 3% | 56.08d | 16d |  |  |  | 1424h | 56h |
| 10 | 3.1.1 | **Fundação** |  | 23d | 2026-06-30 A | 2026-07-30 |  | 17% | 19.17d | 50d |  |  |  | 168h | 56h |
| 11 | 3.1.1.1 | Escavação De Fundação Para Baldrames |  | 3d | 2026-07-01 A | 2026-07-03 A | 6 | 100% |  |  |  |  | AJR (Veks) | 24h | 24h |
| 12 | 3.1.1.2 | Escavação Das Brocas |  | 2d | 2026-07-03 A | 2026-07-06 A | 11FF+1d | 100% |  |  |  |  | AJR (Veks) | 16h | 16h |
| 13 | 3.1.1.3 | Escavação Para Instalação Da Hidraulica |  | 1d | 2026-07-07 | 2026-07-07 | 12 |  |  | 67d |  | start no earlier than 2026-07-07 | Veks | 8h |  |
| 14 | 3.1.1.4 | Execução de Ferragens Para Fundação |  | 10d | 2026-06-30 A | 2026-07-13 |  | 20% | 8d | 63d |  | start no earlier than 2026-06-30 | Veks | 80h | 16h |
| 15 | 3.1.1.5 | Concretagem das Brocas |  | 1d | 2026-07-08 | 2026-07-08 | 12FF+2d |  |  | 0d |  |  |  |  |  |
| 16 | 3.1.1.6 | Aplicação Concreto Magro nas Vigas Baldrames |  | 1d | 2026-07-08 | 2026-07-08 | 15FF |  |  | 0d |  |  |  |  |  |
| 17 | 3.1.1.7 | Locação das Chapas Base com Topógrafo |  | 3d | 2026-07-09 | 2026-07-13 | 16 |  |  | 0d |  |  |  |  |  |
| 18 | 3.1.1.8 | Execução de Concretagem Vigas e Travamento das Chapas Base - 1ª Etapa |  | 1d | 2026-07-14 | 2026-07-14 | 17 |  |  | 0d |  | start no earlier than 2026-07-10 | Veks | 8h |  |
| 19 | 3.1.1.9 | Fazenda: Escavação das Valas de Drenagem e Preenchimento 1ª Camada de Material Drenante |  | 4d | 2026-07-15 | 2026-07-20 | 18 |  |  | 0d |  |  | Fazenda | 32h |  |
| 20 | 3.1.1.10 | AJR - Maquinário: Execução De Nivelamento Das Calçadas, Escavação Das Sapatas E Perfuração Dos Troncos |  | 2d | 2026-07-17 | 2026-07-20 | 19FF |  |  | 58d |  |  |  |  |  |
| 21 | 3.1.1.11 | Execução Ferragem Calçada, Travamento Chapas Base |  | 4d | 2026-07-16 | 2026-07-21 | 19FF+1d |  |  | 0d |  |  |  |  |  |
| 22 | 3.1.1.12 | Passagem Conduítes Calçada |  | 1d | 2026-07-21 | 2026-07-21 | 21FF |  |  | 57d |  |  |  |  |  |
| 23 | 3.1.1.13 | Execução de Concretagem das Calçadas e Sapatas Pilares Tronco |  | 1d | 2026-07-22 | 2026-07-22 | 21 |  |  | 0d |  |  |  |  |  |
| 24 | 3.1.1.14 | Içamento dos Pilares de Madeira |  | 1d | 2026-07-22 | 2026-07-22 | 21 |  |  | 50d | 0d |  |  |  |  |
| 25 | 3.1.1.15 | Execução de Acabamento da Calçada (À ser definido) | manual | 1d | 2026-07-22 | 2026-07-22 | 23FF |  |  |  |  |  |  |  |  |
| 26 | 3.1.1.16 | Execução Bloco de Alvenaria em volto das Toras |  | 3d | 2026-07-23 | 2026-07-27 | 24 |  |  | 50d | 0d |  |  |  |  |
| 27 | 3.1.1.17 | Assentamento Pedra Moledo |  | 3d | 2026-07-28 | 2026-07-30 | 26 |  |  | 50d |  |  |  |  |  |

| ID | WBS | Task | Type | Duration | Start | Finish | Predecessors | Total slack | Free slack | Constraint | Resources | Work |
| --- | --- | --- | --- | --- | --- | --- | --- | --- | --- | --- | --- | --- |
| 28 | 3.1.2 | **Cobertura** |  | 45d | 2026-06-29 | 2026-08-28 |  | 0d |  |  |  | 488h |
| 29 | 3.1.2.1 | Fabricação de Aço Para Telhado |  | 28d | 2026-06-29 | 2026-08-05 |  | 0d |  | finish no earlier than 2026-08-05 | Veks | 224h |
| 30 | 3.1.2.2 | Marcação dos Pilares com Topógrafo | manual | 2d | 2026-07-21 | 2026-07-22 | 23 |  |  |  |  |  |
| 31 | 3.1.2.3 | Execução de Estrutura Metálica para Telhado |  | 10d | 2026-08-06 | 2026-08-19 | 29 | 0d |  |  | Veks | 80h |
| 32 | 3.1.2.4 | Execução Telhado Shingle |  | 12d | 2026-08-11 | 2026-08-26 | 31SS+3d | 29d | 0d |  | Veks | 96h |
| 33 | 3.1.2.5 | Pintura Estrutura do Telhado |  | 8d | 2026-08-18 | 2026-08-27 | 32SS+5d | 29d | 0d |  | Veks | 64h |
| 34 | 3.1.2.6 | Fazenda: Preenchimento 2ª Camada Material Drenante |  | 3d | 2026-08-26 | 2026-08-28 | 33SS+6d | 29d |  |  | Fazenda | 24h |
| 35 | 3.1.3 | **Execução Estrutura Em LSF para Baias** |  | 27d | 2026-07-13 | 2026-08-18 |  | 0d |  |  |  | 96h |
| 36 | 3.1.3.1 | Painelização de LSF | manual | 8d | 2026-07-13 | 2026-07-22 |  |  |  |  | Veks | 64h |
| 37 | 3.1.3.2 | Verticalização de LSF |  | 4d | 2026-08-13 | 2026-08-18 | 31SS+5d | 16d | 0d | finish no earlier than 2026-08-07 | Veks | 32h |
| 38 | 3.1.4 | **Montagem Infra Elétrica e Hidráulica** |  | 5d | 2026-08-19 | 2026-08-25 |  | 0d |  |  |  |  |
| 39 | 3.1.4.1 | Instalação Infra Hidráulica | manual | 5d | 2026-08-19 | 2026-08-25 | 37 |  |  |  |  |  |
| 40 | 3.1.4.2 | Instalação Infra Elétrica | manual | 5d | 2026-08-19 | 2026-08-25 | 37 |  |  |  |  |  |
| 41 | 3.1.5 | **Plaqueamento** |  | 16d | 2026-08-26 | 2026-09-16 |  | 16d |  |  |  | 336h |
| 42 | 3.1.5.1 | Plaqueamento Madeira Externa |  | 8d | 2026-08-26 | 2026-09-04 | 39 | 19d | 0d |  | Veks | 64h |
| 43 | 3.1.5.2 | Plaqueamento Cimenticia Interno |  | 8d | 2026-08-26 | 2026-09-04 | 39 | 16d | 0d |  | Veks | 64h |
| 44 | 3.1.5.3 | Aplicação Basecoat |  | 10d | 2026-09-02 | 2026-09-15 | 43SS+5d | 17d |  |  | Veks | 80h |
| 45 | 3.1.5.4 | Pintura com Stain das Madeiras Pinus |  | 8d | 2026-09-02 | 2026-09-11 | 42SS+5d | 19d |  |  | Veks | 64h |
| 46 | 3.1.5.5 | Aplicação de Resina Sobre Pedra Moledo |  | 8d | 2026-09-07 | 2026-09-16 | 43 | 16d |  |  | Veks | 64h |
| 47 | 3.1.6 | **Elétrica** |  | 10d | 2026-08-26 | 2026-09-08 |  | 22d |  |  |  | 80h |
| 48 | 3.1.6.1 | Execução 1 Ponto de Iluminação por Baia |  | 5d | 2026-08-26 | 2026-09-01 | 40 | 22d | 0d |  | Veks | 40h |
| 49 | 3.1.6.2 | Execução 1 Ponto de Elétrica em Cada Pilar |  | 5d | 2026-09-02 | 2026-09-08 | 48 | 22d |  |  | Veks | 40h |
| 50 | 3.1.7 | **Execução Portão das Baias** |  | 50d | 2026-06-29 | 2026-09-04 |  | 24d |  |  |  | 256h |
| 51 | 3.1.7.1 | Produção dos Portões |  | 20d | 2026-06-29 | 2026-07-24 |  | 54d |  | start no earlier than 2026-06-29 | Veks | 160h |
| 52 | 3.1.7.2 | Instalação dos Portões |  | 12d | 2026-08-20 | 2026-09-04 | 31 | 24d |  |  | Veks | 96h |

| ID | WBS | Task | Type | Duration | Start | Finish | Predecessors | Complete | Remaining | Total slack | Free slack | Constraint | Resources | Work | Actual work |
| --- | --- | --- | --- | --- | --- | --- | --- | --- | --- | --- | --- | --- | --- | --- | --- |
| 53 | 3.2 | **Galpão A** |  | 70d | 2026-06-29 A | 2026-10-02 |  | 3% | 67.63d | 0d |  |  |  | 1376h | 56h |
| 54 | 3.2.1 | **Fundação** |  | 38d | 2026-06-30 A | 2026-08-20 |  | 18% | 31.35d | 31d |  |  |  | 136h | 56h |
| 55 | 3.2.1.1 | Escavação De Fundação Para Baldrames |  | 3d | 2026-07-01 A | 2026-07-03 A |  | 100% |  |  |  |  | AJR (Veks) | 24h | 24h |
| 56 | 3.2.1.2 | Escavação Das Brocas |  | 2d | 2026-07-03 A | 2026-07-06 A | 55FF+1d | 100% |  |  |  |  | AJR (Veks) | 16h | 16h |
| 57 | 3.2.1.3 | Escavação Para Instalação Da Hidraulica |  | 1d | 2026-07-07 | 2026-07-07 | 56 |  |  | 63d |  | start no earlier than 2026-07-07 | Veks | 8h |  |
| 58 | 3.2.1.4 | Execução de Ferragens para Brocas |  | 2d | 2026-07-06 | 2026-07-07 |  |  |  | 63d |  | start no earlier than 2026-07-06 |  |  |  |
| 59 | 3.2.1.5 | Execução de Ferragens Para Fundação |  | 6d | 2026-06-30 A | 2026-07-28 | 23 | 33% | 4d | 23d | 0d | start no earlier than 2026-06-30 | Veks | 48h | 16h |
| 60 | 3.2.1.6 | Concretagem das Brocas |  | 1d | 2026-07-08 | 2026-07-08 | 15FF |  |  | 62d | 0d |  |  |  |  |
| 61 | 3.2.1.7 | Aplicação Concreto Magro nas Vigas Baldrames |  | 1d | 2026-07-08 | 2026-07-08 | 60FF |  |  | 62d |  |  |  |  |  |
| 62 | 3.2.1.8 | Locação das Chapas Base com Topógrafo |  | 3d | 2026-07-29 | 2026-07-31 | 59 |  |  | 23d | 0d |  |  |  |  |
| 63 | 3.2.1.9 | Execução de Concretagem Vigas e Travamento das Chapas Base - 1ª Etapa |  | 1d | 2026-08-04 | 2026-08-04 | 62FF+2d |  |  | 23d | 0d | start no earlier than 2026-07-10 | Veks | 8h |  |
| 64 | 3.2.1.10 | Fazenda: Escavação das Valas de Drenagem e Preenchimento 1ª Camada de Material Drenante |  | 4d | 2026-08-05 | 2026-08-10 | 63 |  |  | 23d | 0d |  | Fazenda | 32h |  |
| 65 | 3.2.1.11 | Ajr - Maquinário: Execução De Nivelamento Das Calçadas, Escavação Das Sapatas E Perfuração Dos Troncos |  | 2d | 2026-08-07 | 2026-08-10 | 64FF |  |  | 39d |  |  |  |  |  |
| 66 | 3.2.1.12 | Execução Ferragem Calçada, Travamento Chapas Base |  | 4d | 2026-08-06 | 2026-08-11 | 64FF+1d |  |  | 23d | 0d |  |  |  |  |
| 67 | 3.2.1.13 | Passagem Conduítes Calçada |  | 1d | 2026-08-11 | 2026-08-11 | 66FF |  |  | 38d |  |  |  |  |  |
| 68 | 3.2.1.14 | Execução de Concretagem das Calçadas e Sapatas Pilares Tronco |  | 1d | 2026-08-12 | 2026-08-12 | 66 |  |  | 35d | 0d |  |  |  |  |
| 69 | 3.2.1.15 | Içamento dos Pilares de Madeira |  | 1d | 2026-08-12 | 2026-08-12 | 66 |  |  | 23d | 0d |  |  |  |  |
| 70 | 3.2.1.16 | Execução de Acabamento da Calçada (À ser definido) | manual | 1d | 2026-07-22 | 2026-07-22 | 68FF |  |  |  |  |  |  |  |  |
| 71 | 3.2.1.17 | Execução Bloco de Alvenaria em volto das Toras |  | 3d | 2026-08-13 | 2026-08-17 | 69 |  |  | 23d | 0d |  |  |  |  |
| 72 | 3.2.1.18 | Assentamento Pedra Moledo |  | 3d | 2026-08-18 | 2026-08-20 | 71 |  |  | 23d | 0d |  |  |  |  |
| 73 | 3.2.2 | **Cobertura** |  | 55d | 2026-06-29 | 2026-09-11 |  |  |  | 15d |  |  |  | 488h |  |
| 74 | 3.2.2.1 | Fabricação de Aço Para Telhado |  | 28d | 2026-06-29 | 2026-08-05 |  |  |  | 42d |  | finish no earlier than 2026-08-05 | Veks | 224h |  |
| 75 | 3.2.2.2 | Marcação dos Pilares com Topógrafo | manual | 2d | 2026-07-21 | 2026-07-22 | 68 |  |  |  |  |  |  |  |  |
| 76 | 3.2.2.3 | Execução de Estrutura Metálica para Telhado |  | 10d | 2026-08-20 | 2026-09-02 | 31 |  |  | 0d |  |  | Veks | 80h |  |
| 77 | 3.2.2.4 | Execução Telhado Shingle |  | 12d | 2026-08-25 | 2026-09-09 | 76SS+3d |  |  | 15d | 0d |  | Veks | 96h |  |
| 78 | 3.2.2.5 | Pintura Estrutura do Telhado |  | 8d | 2026-09-01 | 2026-09-10 | 77SS+5d |  |  | 15d | 0d |  | Veks | 64h |  |
| 79 | 3.2.2.6 | Fazenda: Preenchimento 2ª Camada Material Drenante |  | 3d | 2026-09-09 | 2026-09-11 | 78SS+6d |  |  | 15d |  |  | Fazenda | 24h |  |

| ID | WBS | Task | Type | Duration | Start | Finish | Predecessors | Total slack | Free slack | Constraint | Resources | Work |
| --- | --- | --- | --- | --- | --- | --- | --- | --- | --- | --- | --- | --- |
| 80 | 3.2.3 | **Execução Estrutura Em LSF para Baias** |  | 42d | 2026-07-13 | 2026-09-08 |  | 0d |  |  |  | 96h |
| 81 | 3.2.3.1 | Painelização de LSF | manual | 8d | 2026-07-13 | 2026-07-22 |  |  |  |  | Veks | 64h |
| 82 | 3.2.3.2 | Verticalização de LSF |  | 4d | 2026-09-03 | 2026-09-08 | 76 | 0d |  | finish no earlier than 2026-08-07 | Veks | 32h |
| 83 | 3.2.4 | **Montagem Infra Elétrica e Hidráulica** |  | 5d | 2026-09-09 | 2026-09-15 |  | 0d |  |  |  |  |
| 84 | 3.2.4.1 | Instalação Infra Hidráulica | manual | 5d | 2026-09-09 | 2026-09-15 | 82 |  |  |  |  |  |
| 85 | 3.2.4.2 | Instalação Infra Elétrica | manual | 5d | 2026-09-09 | 2026-09-15 | 82 |  |  |  |  |  |
| 86 | 3.2.5 | **Plaqueamento** |  | 31d | 2026-08-21 | 2026-10-02 |  | 0d |  |  |  | 320h |
| 87 | 3.2.5.1 | Plaqueamento Madeira Externa |  | 8d | 2026-09-16 | 2026-09-25 | 85 | 0d |  |  | Veks | 64h |
| 88 | 3.2.5.2 | Plaqueamento Cimenticia Interno |  | 8d | 2026-09-16 | 2026-09-25 | 85 | 0d |  |  | Veks | 64h |
| 89 | 3.2.5.3 | Aplicação Basecoat |  | 8d | 2026-09-23 | 2026-10-02 | 88SS+5d | 0d |  |  | Veks | 64h |
| 90 | 3.2.5.4 | Pintura com Stain das Madeiras Pinus |  | 8d | 2026-09-23 | 2026-10-02 | 87SS+5d | 0d |  |  | Veks | 64h |
| 91 | 3.2.5.5 | Aplicação de Resina Sobre Pedra Moledo |  | 8d | 2026-08-21 | 2026-09-01 | 72 | 23d |  |  | Veks | 64h |
| 92 | 3.2.6 | **Elétrica** |  | 10d | 2026-09-16 | 2026-09-29 |  | 3d |  |  |  | 80h |
| 93 | 3.2.6.1 | Execução 1 Ponto de Iluminação por Baia |  | 5d | 2026-09-16 | 2026-09-22 | 85 | 3d | 0d |  | Veks | 40h |
| 94 | 3.2.6.2 | Execução 1 Ponto de Elétrica em Cada Pilar |  | 5d | 2026-09-23 | 2026-09-29 | 93 | 3d |  |  | Veks | 40h |
| 95 | 3.2.7 | **Execução Portão das Baias** |  | 60d | 2026-06-29 | 2026-09-18 |  | 10d |  |  |  | 256h |
| 96 | 3.2.7.1 | Produção dos Portões |  | 20d | 2026-06-29 | 2026-07-24 |  | 50d |  | start no earlier than 2026-06-29 | Veks | 160h |
| 97 | 3.2.7.2 | Instalação dos Portões |  | 12d | 2026-09-03 | 2026-09-18 | 76 | 10d |  |  | Veks | 96h |
| 98 | 4 | **Desmobilização** |  | 4d | 2026-10-05 | 2026-10-08 |  | 0d |  |  |  | 32h |
| 99 | 4.1 | Limpeza Geral |  | 2d | 2026-10-05 | 2026-10-06 | 53 | 0d |  |  | Veks | 16h |
| 100 | 4.2 | Desmobilização |  | 2d | 2026-10-07 | 2026-10-08 | 99 | 0d |  |  | Veks | 16h |
