Schedule from MS Project, 2026-06-08 to 2026-09-11, A marks actual dates.

## Calendars

- Padrão: Mon-Fri 08:00-12:00, 13:00-17:00; Sat-Sun off.

## Resources

| Resource |
| --- |
| Ana |
| Equipe Veks |
| Paulo |
| João 3o |
| Priscila |
| Alan |
| Guilherme |

## Schedule

| ID | WBS | Task | Type | Duration | Start | Finish | Predecessors | Complete | Remaining | Total slack | Free slack | Constraint | Resources | Work | Actual work |
| --- | --- | --- | --- | --- | --- | --- | --- | --- | --- | --- | --- | --- | --- | --- | --- |
| 1 | 1 | **OBRA ITU - BAIAS FAZENDA SANTA MÔNICA** |  | 70d | 2026-06-08 A | 2026-09-11 |  |  | 69.79d | 0d |  |  |  | 776h | 8h |
| 2 | 1.1 | **MOBILIZAÇÃO** |  | 14d | 2026-06-08 A | 2026-06-25 |  | 2% | 13.74d | 56d |  |  |  | 416h | 8h |
| 3 | 1.1.1 | PROPOSTA ENCARREGADO |  | 5d | 2026-06-08 | 2026-06-12 |  |  |  | 65d |  |  | Guilherme | 40h |  |
| 4 | 1.1.2 | ESTUDO DE SOLO SPT |  | 1d | 2026-06-11 A | 2026-06-11 A |  | 100% |  |  |  |  | João 3o | 8h | 8h |
| 5 | 1.1.3 | EXECUÇÃO DE PROJETOS. LSF, TELHADO, PISO, BALDRAME, FUNDAÇÃO PARA PILARES DE MADEIRA |  | 9d | 2026-06-08 | 2026-06-18 |  |  |  | 11d | 0d |  | Priscila | 72h |  |
| 6 | 1.1.4 | CHECK LIST DE FERRAMENTAS PARA MOBILIZAÇÃO |  | 5d | 2026-06-08 | 2026-06-12 |  |  |  | 65d |  |  | Alan | 40h |  |
| 7 | 1.1.5 | CHECK LIST DE ATIVIDADES PARA MOBILIZAÇÃO |  | 5d | 2026-06-08 | 2026-06-12 |  |  |  | 65d |  |  | Alan | 40h |  |
| 8 | 1.1.6 | CONTRATAÇÃO DE EQUIPE CIVIL |  | 5d | 2026-06-08 | 2026-06-12 |  |  |  | 65d |  |  | Equipe Veks | 40h |  |
| 9 | 1.1.7 | CONTRATAÇÃO DE EQUIPE DE SERRALHERIA |  | 5d | 2026-06-08 | 2026-06-12 |  |  |  | 65d |  |  | Equipe Veks | 40h |  |
| 10 | 1.1.8 | VALIDAÇÃO DO ORÇAMENTO FUNDAÇÃO |  | 5d | 2026-06-08 | 2026-06-12 |  |  |  | 65d |  |  | Alan | 40h |  |
| 11 | 1.1.9 | VALIDAÇÃO DO ORÇAMENTO GERAL |  | 5d | 2026-06-19 | 2026-06-25 | 5 |  |  | 56d |  |  | Equipe Veks | 40h |  |
| 12 | 1.1.10 | ALUGUEL DE CASA / HOTEL |  | 7d | 2026-06-08 | 2026-06-16 |  |  |  | 63d |  |  | Ana | 56h |  |
| 13 | 1.1.11 | MOBILIZAÇÃO EQUIPE |  | 2d | 2026-06-08 | 2026-06-09 |  |  |  | 68d |  |  |  |  |  |
| 14 | 1.2 | **BAIAS** |  | 70d | 2026-06-08 | 2026-09-11 |  |  |  | 0d |  |  |  | 360h |  |
| 15 | 1.2.1 | **MARCAÇÃO DE OBRA** |  | 0d | 2026-06-22 | 2026-06-22 |  |  |  | 15d | 0d |  |  |  |  |
| 16 | 1.2.1.1 | Contratar topografo ? | milestone | 0d | 2026-06-22 | 2026-06-22 |  |  |  | 15d |  | start no earlier than 2026-06-22 | Alan |  |  |
| 17 | 1.2.2 | **FUNDAÇÃO** |  | 22d | 2026-06-22 | 2026-07-21 |  |  |  | 15d |  |  |  |  |  |
| 18 | 1.2.2.1 | ESCAVAÇÃO DE SAPATAS PARA PILARES |  | 7d | 2026-06-22 | 2026-06-30 | 15 |  |  | 48d | 0d |  |  |  |  |
| 19 | 1.2.2.2 | ESCAVAÇÃO DE FUNDAÇÃO PARA BALDRAMES |  | 7d | 2026-06-22 | 2026-06-30 | 15 |  |  | 15d | 0d |  |  |  |  |
| 20 | 1.2.2.3 | EXECUÇÃO DE CAIXARIA PARA PISO DE CONCRETO E VIGAS BALDRAME |  | 10d | 2026-07-01 | 2026-07-14 | 19 |  |  | 43d |  |  |  |  |  |
| 21 | 1.2.2.4 | EXECUÇÃO DE FERRAGENS PARA FUNDAÇÃO |  | 5d | 2026-07-01 | 2026-07-07 | 18 |  |  | 48d |  |  |  |  |  |
| 22 | 1.2.2.5 | EXECUÇÃO DE CAIXARIA |  | 5d | 2026-07-01 | 2026-07-07 | 19 |  |  | 15d | 0d |  |  |  |  |
| 23 | 1.2.2.6 | EXECUÇÃO DE CONCRETAGEM DAS FUNDAÇÕES |  | 5d | 2026-07-08 | 2026-07-14 | 22 |  |  | 15d | 0d |  |  |  |  |
| 24 | 1.2.2.7 | EXECUÇÃO DE CONCRETAGEM DAS CALÇADAS |  | 5d | 2026-07-15 | 2026-07-21 | 23 |  |  | 38d |  |  |  |  |  |
| 25 | 1.2.3 | IÇAMENTO DOS PILARES DE MADEIRA |  | 3d | 2026-07-15 | 2026-07-17 | 23 |  |  | 15d | 0d |  |  |  |  |
| 26 | 1.2.4 | FABRICAÇÃO DE AÇO PARA TELHADO |  | 20d | 2026-06-19 | 2026-07-16 | 5 |  |  | 11d | 0d |  |  |  |  |
| 27 | 1.2.5 | EXECUÇÃO DE ESTRUTURA METÁLICA PARA TELHADO |  | 20d | 2026-07-17 | 2026-08-13 | 26 |  |  | 11d | 0d |  |  |  |  |

| ID | WBS | Task | Duration | Start | Finish | Predecessors | Total slack | Free slack | Constraint | Resources | Work |
| --- | --- | --- | --- | --- | --- | --- | --- | --- | --- | --- | --- |
| 28 | 1.2.6 | **EXECUÇÃO DE ESTRUTURA EM LSF PARA BAIAS** | 15d | 2026-07-01 | 2026-07-21 |  | 13d |  |  |  | 120h |
| 29 | 1.2.6.1 | PAINELIZAÇÃO DE LSF | 7d | 2026-07-01 | 2026-07-09 |  | 13d | 0d | start no earlier than 2026-07-01 | Equipe Veks | 56h |
| 30 | 1.2.6.2 | VERTICALIZAÇÃO DE LSF | 8d | 2026-07-10 | 2026-07-21 | 29 | 13d | 0d |  | Equipe Veks | 64h |
| 31 | 1.2.7 | **PLAQUEMENTO** | 57d | 2026-06-08 | 2026-08-25 |  | 13d |  |  |  | 240h |
| 32 | 1.2.7.1 | CHAPEAMENTO EXTERNO DAS BAIAS | 15d | 2026-07-22 | 2026-08-11 | 30 | 13d | 0d |  | Equipe Veks | 120h |
| 33 | 1.2.7.2 | CHAPEAMENTO INTERNO DA BAIAS | 15d | 2026-06-08 | 2026-06-26 |  | 40d | 0d |  | Equipe Veks | 120h |
| 34 | 1.2.7.3 | EXECUÇÃO DE BASECOAT | 15d | 2026-06-29 | 2026-07-17 | 33 | 40d |  |  |  |  |
| 35 | 1.2.7.4 | PINTURA COM STAIN DAS MADEIRAS PINUS | 10d | 2026-08-12 | 2026-08-25 | 32 | 13d |  |  |  |  |
| 36 | 1.2.7.5 | EXECUÇÃO DE PEDRA MOLEDO | 20d | 2026-07-20 | 2026-08-14 | 25 | 15d | 0d |  |  |  |
| 37 | 1.2.7.6 | APLICAÇÃO DE RESINA SOBRE PEDRA MODELO | 5d | 2026-08-17 | 2026-08-21 | 36 | 15d |  |  |  |  |
| 38 | 1.2.8 | **ELÉTRICA** | 10d | 2026-08-14 | 2026-08-27 |  | 11d |  |  |  |  |
| 39 | 1.2.8.1 | EXECUÇÃO DE 1 PONTO DE ILUMINAÇÃO POR BAIA | 5d | 2026-08-14 | 2026-08-20 | 27 | 11d | 0d |  |  |  |
| 40 | 1.2.8.2 | EXECUÇÃO DE 1 PONTO DE ELÉTRICA EM CADA PILAR | 5d | 2026-08-21 | 2026-08-27 | 39 | 11d |  |  |  |  |
| 41 | 1.2.9 | EXECUÇÃO DE PORTÃO DAS BAIAS | 40d | 2026-06-22 | 2026-08-14 | 15 | 20d |  |  |  |  |
| 42 | 1.2.10 | EXECUÇÃO DE TELHADO SINGLE | 30d | 2026-07-27 | 2026-09-04 | 41 | 5d |  | start no earlier than 2026-07-27 |  |  |
| 43 | 1.2.11 | PINTURA DE ESTRUTURA DO TELHADO | 15d | 2026-08-24 | 2026-09-11 | 42 | 0d |  | start no earlier than 2026-08-24 |  |  |
