# Obra Itu - Baias Fazenda Santa Mônica

Schedule from MS Project XML, 2026-06-08 to 2026-10-08, A marks actual dates.

## Calendars

- Padrão: Mon-Fri 08:00-12:00, 13:00-17:00; Sat-Sun off.

## Resources

| Resource |
| --- |
| Ana |
| Equipe Veks |
| Paulo |
| João 3o |
| Priscila |
| Alan |
| Guilherme |
| Fazenda |
| Veks |
| AJR |
| AJR (Veks) |

## Schedule

| ID | WBS | Task | Type | Duration | Start | Finish | Predecessors | Complete | Remaining | Total slack | Free slack | Constraint | Resources | Work | Actual work |
| --- | --- | --- | --- | --- | --- | --- | --- | --- | --- | --- | --- | --- | --- | --- | --- |
| 1 | 1 | **Mobilização** |  | 18d | 2026-06-08 A | 2026-07-01 A |  | 100% |  |  |  |  |  | 112h | 112h |
| 2 | 1.1 | Estudo de Solo SPT |  | 1d | 2026-06-11 A | 2026-06-11 A |  | 100% |  |  |  |  | João 3o | 8h | 8h |
| 3 | 1.2 | Execução de projetos LSF, Telhado, Piso, Baldrame, Fundação para Pilares de Madeira |  | 9d | 2026-06-08 A | 2026-06-18 A |  | 100% |  |  |  |  | Priscila | 72h | 72h |
| 4 | 1.3 | Mobilização Equipe |  | 1d | 2026-06-29 A | 2026-06-29 A |  | 100% |  |  |  | start no earlier than 2026-06-29 | Veks | 8h | 8h |
| 5 | 1.4 | Fazenda: Nivelamento dos Platôs | manual | 3d | 2026-06-29 A | 2026-07-01 A |  | 100% |  |  |  |  | Fazenda | 24h | 24h |
| 6 | 2 | **Marcação de Obra** |  | 1d | 2026-06-30 A | 2026-06-30 A |  | 100% |  |  |  |  |  | 8h | 8h |
| 7 | 2.1 | Execução de Gabarito |  | 1d | 2026-06-30 A | 2026-06-30 A |  | 100% |  |  |  | start no earlier than 2026-06-30 | Veks | 8h | 8h |
| 8 | 3 | **Baias** |  | 69d | 2026-06-30 A | 2026-10-02 |  | 6% | 65.1d | 4d |  |  |  | 2560h | 136h |
| 9 | 3.1 | **Galpão B** |  | 57d | 2026-06-30 A | 2026-09-16 |  | 7% | 53.08d | 16d |  |  |  | 1328h | 96h |
| 10 | 3.1.1 | **Fundação** |  | 29d | 2026-06-30 A | 2026-08-07 |  | 32% | 19.76d | 44d |  |  |  | 176h | 96h |
| 11 | 3.1.1.1 | Escavação De Fundação Para Baldrames |  | 3d | 2026-07-01 A | 2026-07-03 A | 6 | 100% |  |  |  |  | AJR (Veks) | 24h | 24h |
| 12 | 3.1.1.2 | Escavação Das Brocas |  | 2d | 2026-07-03 A | 2026-07-06 A | 11FF+1d | 100% |  |  |  |  | AJR (Veks) | 16h | 16h |
| 13 | 3.1.1.3 | Escavação Para Instalação Da Hidraulica | manual | 2d | 2026-07-15 | 2026-07-16 |  |  |  |  |  | start no earlier than 2026-07-15 | Veks | 16h |  |
| 14 | 3.1.1.4 | Execução de Ferragens Para Fundação |  | 10d | 2026-06-30 A | 2026-07-13 |  | 70% | 3d | 51d | 0d | start no earlier than 2026-06-30 | Veks | 80h | 56h |
| 15 | 3.1.1.5 | Concretagem das Brocas |  | 1d | 2026-07-08 A | 2026-07-08 A | 12FF+2d | 100% |  |  |  |  |  |  |  |
| 16 | 3.1.1.6 | Aplicação Concreto Magro nas Vigas Baldrames |  | 1d | 2026-07-08 A | 2026-07-08 | 15FF | 70% | 0.3d | 66d |  |  |  |  |  |
| 17 | 3.1.1.7 | Entrega das Chapas Base | manual | 1d | 2026-07-17 | 2026-07-17 |  |  |  |  |  |  |  |  |  |
| 18 | 3.1.1.8 | Locação das Chapas Base |  | 2d | 2026-07-20 | 2026-07-21 | 17 |  |  | 44d | 0d |  |  |  |  |
| 19 | 3.1.1.9 | Execução de Concretagem Vigas e Travamento das Chapas Base - 1ª Etapa |  | 1d | 2026-07-22 | 2026-07-22 | 18 |  |  | 44d | 0d | start no earlier than 2026-07-10 | Veks | 8h |  |
| 20 | 3.1.1.10 | Fazenda: Escavação das Valas de Drenagem e Preenchimento 1ª Camada de Material Drenante |  | 4d | 2026-07-23 | 2026-07-28 | 19 |  |  | 44d | 0d |  | Fazenda | 32h |  |
| 21 | 3.1.1.11 | AJR - Maquinário: Execução De Nivelamento Das Calçadas, Escavação Das Sapatas E Perfuração Dos Troncos |  | 2d | 2026-07-27 | 2026-07-28 | 20FF |  |  | 52d |  |  |  |  |  |
| 22 | 3.1.1.12 | Execução Ferragem Calçada, Travamento Chapas Base |  | 4d | 2026-07-24 | 2026-07-29 | 20FF+1d |  |  | 44d | 0d |  |  |  |  |
| 23 | 3.1.1.13 | Passagem Conduítes Calçada |  | 1d | 2026-07-29 | 2026-07-29 | 22FF |  |  | 51d |  |  |  |  |  |
| 24 | 3.1.1.14 | Execução de Concretagem das Calçadas e Sapatas Pilares Tronco |  | 1d | 2026-07-30 | 2026-07-30 | 22 |  |  | 48d | 0d |  |  |  |  |
| 25 | 3.1.1.15 | Içamento dos Pilares de Madeira |  | 1d | 2026-07-30 | 2026-07-30 | 22 |  |  | 44d | 0d |  |  |  |  |
| 26 | 3.1.1.16 | Execução de Acabamento da Calçada |  | 1d | 2026-07-30 | 2026-07-30 | 24FF |  |  | 50d |  |  |  |  |  |
| 27 | 3.1.1.17 | Execução Bloco de Alvenaria em volto das Toras |  | 3d | 2026-07-31 | 2026-08-04 | 25 |  |  | 44d | 0d |  |  |  |  |
| 28 | 3.1.1.18 | Assentamento Pedra Moledo |  | 3d | 2026-08-05 | 2026-08-07 | 27 |  |  | 44d |  |  |  |  |  |

| ID | WBS | Task | Type | Duration | Start | Finish | Predecessors | Total slack | Free slack | Constraint | Resources | Work |
| --- | --- | --- | --- | --- | --- | --- | --- | --- | --- | --- | --- | --- |
| 29 | 3.1.2 | **Cobertura** |  | 32d | 2026-07-16 | 2026-08-28 |  | 0d |  |  |  | 384h |
| 30 | 3.1.2.1 | Fabricação de Aço Para Telhado |  | 15d | 2026-07-16 | 2026-08-05 |  | 0d |  | finish no earlier than 2026-08-05 | Veks | 120h |
| 31 | 3.1.2.2 | Marcação dos Pilares com Topógrafo | manual | 2d | 2026-07-21 | 2026-07-22 | 24 |  |  |  |  |  |
| 32 | 3.1.2.3 | Execução de Estrutura Metálica para Telhado |  | 10d | 2026-08-06 | 2026-08-19 | 30 | 0d |  |  | Veks | 80h |
| 33 | 3.1.2.4 | Execução Telhado Shingle |  | 12d | 2026-08-11 | 2026-08-26 | 32SS+3d | 29d | 0d |  | Veks | 96h |
| 34 | 3.1.2.5 | Pintura Estrutura do Telhado |  | 8d | 2026-08-18 | 2026-08-27 | 33SS+5d | 29d | 0d |  | Veks | 64h |
| 35 | 3.1.2.6 | Fazenda: Preenchimento 2ª Camada Material Drenante |  | 3d | 2026-08-26 | 2026-08-28 | 34SS+6d | 29d |  |  | Fazenda | 24h |
| 36 | 3.1.3 | **Execução Estrutura Em LSF para Baias** |  | 17d | 2026-07-27 | 2026-08-18 |  | 0d |  |  |  | 96h |
| 37 | 3.1.3.1 | Painelização de LSF | manual | 8d | 2026-07-27 | 2026-08-05 |  |  |  |  | Veks | 64h |
| 38 | 3.1.3.2 | Verticalização de LSF |  | 4d | 2026-08-13 | 2026-08-18 | 32SS+5d | 16d | 0d | finish no earlier than 2026-08-07 | Veks | 32h |
| 39 | 3.1.4 | **Montagem Infra Elétrica e Hidráulica** |  | 5d | 2026-08-19 | 2026-08-25 |  | 0d |  |  |  |  |
| 40 | 3.1.4.1 | Instalação Infra Hidráulica | manual | 5d | 2026-08-19 | 2026-08-25 | 38 |  |  |  |  |  |
| 41 | 3.1.4.2 | Instalação Infra Elétrica | manual | 5d | 2026-08-19 | 2026-08-25 | 38 |  |  |  |  |  |
| 42 | 3.1.5 | **Plaqueamento** |  | 16d | 2026-08-26 | 2026-09-16 |  | 16d |  |  |  | 336h |
| 43 | 3.1.5.1 | Plaqueamento Madeira Externa |  | 8d | 2026-08-26 | 2026-09-04 | 40 | 19d | 0d |  | Veks | 64h |
| 44 | 3.1.5.2 | Plaqueamento Cimenticia Interno |  | 8d | 2026-08-26 | 2026-09-04 | 40 | 16d | 0d |  | Veks | 64h |
| 45 | 3.1.5.3 | Aplicação Basecoat |  | 10d | 2026-09-02 | 2026-09-15 | 44SS+5d | 17d |  |  | Veks | 80h |
| 46 | 3.1.5.4 | Pintura com Stain das Madeiras Pinus |  | 8d | 2026-09-02 | 2026-09-11 | 43SS+5d | 19d |  |  | Veks | 64h |
| 47 | 3.1.5.5 | Aplicação de Resina Sobre Pedra Moledo |  | 8d | 2026-09-07 | 2026-09-16 | 44 | 16d |  |  | Veks | 64h |
| 48 | 3.1.6 | **Elétrica** |  | 10d | 2026-08-26 | 2026-09-08 |  | 22d |  |  |  | 80h |
| 49 | 3.1.6.1 | Execução 1 Ponto de Iluminação por Baia |  | 5d | 2026-08-26 | 2026-09-01 | 41 | 22d | 0d |  | Veks | 40h |
| 50 | 3.1.6.2 | Execução 1 Ponto de Elétrica em Cada Pilar |  | 5d | 2026-09-02 | 2026-09-08 | 49 | 22d |  |  | Veks | 40h |
| 51 | 3.1.7 | **Execução Portão das Baias** |  | 30d | 2026-07-27 | 2026-09-04 |  | 24d |  |  |  | 256h |
| 52 | 3.1.7.1 | Produção dos Portões |  | 20d | 2026-07-27 | 2026-08-21 |  | 34d |  | start no earlier than 2026-07-27 | Veks | 160h |
| 53 | 3.1.7.2 | Instalação dos Portões |  | 12d | 2026-08-20 | 2026-09-04 | 32 | 24d |  |  | Veks | 96h |

| ID | WBS | Task | Type | Duration | Start | Finish | Predecessors | Complete | Remaining | Total slack | Free slack | Constraint | Resources | Work | Actual work |
| --- | --- | --- | --- | --- | --- | --- | --- | --- | --- | --- | --- | --- | --- | --- | --- |
| 54 | 3.2 | **Galpão A** |  | 68d | 2026-07-01 A | 2026-10-02 |  | 4% | 65d | 0d |  |  |  | 1232h | 40h |
| 55 | 3.2.1 | **Fundação** |  | 34d | 2026-07-01 A | 2026-08-17 |  | 20% | 27.12d | 34d |  |  |  | 96h | 40h |
| 56 | 3.2.1.1 | Escavação De Fundação Para Baldrames |  | 3d | 2026-07-01 A | 2026-07-03 A |  | 100% |  |  |  |  | AJR (Veks) | 24h | 24h |
| 57 | 3.2.1.2 | Escavação Das Brocas |  | 2d | 2026-07-03 A | 2026-07-06 A | 56FF+1d | 100% |  |  |  |  | AJR (Veks) | 16h | 16h |
| 58 | 3.2.1.3 | Escavação Para Instalação Da Hidraulica |  | 2d | 2026-07-17 | 2026-07-20 | 13 |  |  | 54d |  | start no earlier than 2026-07-15 | Veks | 16h |  |
| 59 | 3.2.1.4 | Execução de Ferragens para Brocas |  | 2d | 2026-07-06 A | 2026-07-07 A |  | 100% |  |  |  | start no earlier than 2026-07-06 |  |  |  |
| 60 | 3.2.1.5 | Execução de Ferragens Para Fundação |  | 8d | 2026-07-14 | 2026-07-23 | 14 |  |  | 51d |  |  |  |  |  |
| 61 | 3.2.1.6 | Concretagem das Brocas |  | 1d | 2026-07-08 A | 2026-07-08 A | 15FF | 100% |  |  |  |  |  |  |  |
| 62 | 3.2.1.7 | Aplicação Concreto Magro nas Vigas Baldrames |  | 1d | 2026-07-08 A | 2026-07-08 | 61FF | 70% | 0.3d | 62d |  |  |  |  |  |
| 63 | 3.2.1.8 | Entrega das Chapas Base |  | 1d | 2026-07-24 | 2026-07-24 | 17FF+5d |  |  | 26d | 0d |  |  |  |  |
| 64 | 3.2.1.9 | Locação das Chapas Base |  | 2d | 2026-07-27 | 2026-07-28 | 63 |  |  | 26d | 0d |  |  |  |  |
| 65 | 3.2.1.10 | Execução de Concretagem Vigas e Travamento das Chapas Base - 1ª Etapa |  | 1d | 2026-07-30 | 2026-07-30 | 64FF+2d |  |  | 26d | 0d | start no earlier than 2026-07-10 | Veks | 8h |  |
| 66 | 3.2.1.11 | Fazenda: Escavação das Valas de Drenagem e Preenchimento 1ª Camada de Material Drenante |  | 4d | 2026-07-31 | 2026-08-05 | 65 |  |  | 26d | 0d |  | Fazenda | 32h |  |
| 67 | 3.2.1.12 | Ajr - Maquinário: Execução De Nivelamento Das Calçadas, Escavação Das Sapatas E Perfuração Dos Troncos |  | 2d | 2026-08-04 | 2026-08-05 | 66FF |  |  | 42d |  |  |  |  |  |
| 68 | 3.2.1.13 | Execução Ferragem Calçada, Travamento Chapas Base |  | 4d | 2026-08-03 | 2026-08-06 | 66FF+1d |  |  | 26d | 0d |  |  |  |  |
| 69 | 3.2.1.14 | Passagem Conduítes Calçada |  | 1d | 2026-08-06 | 2026-08-06 | 68FF |  |  | 41d |  |  |  |  |  |
| 70 | 3.2.1.15 | Execução de Concretagem das Calçadas e Sapatas Pilares Tronco |  | 1d | 2026-08-07 | 2026-08-07 | 68 |  |  | 38d | 0d |  |  |  |  |
| 71 | 3.2.1.16 | Içamento dos Pilares de Madeira |  | 1d | 2026-08-07 | 2026-08-07 | 68 |  |  | 26d | 0d |  |  |  |  |
| 72 | 3.2.1.17 | Execução de Acabamento da Calçada |  | 1d | 2026-08-07 | 2026-08-07 | 70FF |  |  | 40d |  |  |  |  |  |
| 73 | 3.2.1.18 | Execução Bloco de Alvenaria em volto das Toras |  | 3d | 2026-08-10 | 2026-08-12 | 71 |  |  | 26d | 0d |  |  |  |  |
| 74 | 3.2.1.19 | Assentamento Pedra Moledo |  | 3d | 2026-08-13 | 2026-08-17 | 73 |  |  | 26d | 0d |  |  |  |  |
| 75 | 3.2.2 | **Cobertura** |  | 42d | 2026-07-16 | 2026-09-11 |  |  |  | 3d |  |  |  | 384h |  |
| 76 | 3.2.2.1 | Fabricação de Aço Para Telhado |  | 15d | 2026-07-16 | 2026-08-05 |  |  |  | 42d |  | finish no earlier than 2026-08-05 | Veks | 120h |  |
| 77 | 3.2.2.2 | Marcação dos Pilares com Topógrafo | manual | 2d | 2026-07-21 | 2026-07-22 | 70 |  |  |  |  |  |  |  |  |
| 78 | 3.2.2.3 | Execução de Estrutura Metálica para Telhado |  | 10d | 2026-08-20 | 2026-09-02 | 32 |  |  | 0d |  |  | Veks | 80h |  |
| 79 | 3.2.2.4 | Execução Telhado Shingle |  | 12d | 2026-08-25 | 2026-09-09 | 78SS+3d |  |  | 15d | 0d |  | Veks | 96h |  |
| 80 | 3.2.2.5 | Pintura Estrutura do Telhado |  | 8d | 2026-09-01 | 2026-09-10 | 79SS+5d |  |  | 15d | 0d |  | Veks | 64h |  |
| 81 | 3.2.2.6 | Fazenda: Preenchimento 2ª Camada Material Drenante |  | 3d | 2026-09-09 | 2026-09-11 | 80SS+6d |  |  | 15d |  |  | Fazenda | 24h |  |

| ID | WBS | Task | Type | Duration | Start | Finish | Predecessors | Total slack | Free slack | Constraint | Resources | Work |
| --- | --- | --- | --- | --- | --- | --- | --- | --- | --- | --- | --- | --- |
| 82 | 3.2.3 | **Execução Estrutura Em LSF para Baias** |  | 32d | 2026-07-27 | 2026-09-08 |  | 0d |  |  |  | 96h |
| 83 | 3.2.3.1 | Painelização de LSF | manual | 8d | 2026-07-27 | 2026-08-05 |  |  |  |  | Veks | 64h |
| 84 | 3.2.3.2 | Verticalização de LSF |  | 4d | 2026-09-03 | 2026-09-08 | 78 | 0d |  | finish no earlier than 2026-08-07 | Veks | 32h |
| 85 | 3.2.4 | **Montagem Infra Elétrica e Hidráulica** |  | 5d | 2026-09-09 | 2026-09-15 |  | 0d |  |  |  |  |
| 86 | 3.2.4.1 | Instalação Infra Hidráulica | manual | 5d | 2026-09-09 | 2026-09-15 | 84 |  |  |  |  |  |
| 87 | 3.2.4.2 | Instalação Infra Elétrica | manual | 5d | 2026-09-09 | 2026-09-15 | 84 |  |  |  |  |  |
| 88 | 3.2.5 | **Plaqueamento** |  | 34d | 2026-08-18 | 2026-10-02 |  | 0d |  |  |  | 320h |
| 89 | 3.2.5.1 | Plaqueamento Madeira Externa |  | 8d | 2026-09-16 | 2026-09-25 | 87 | 0d |  |  | Veks | 64h |
| 90 | 3.2.5.2 | Plaqueamento Cimenticia Interno |  | 8d | 2026-09-16 | 2026-09-25 | 87 | 0d |  |  | Veks | 64h |
| 91 | 3.2.5.3 | Aplicação Basecoat |  | 8d | 2026-09-23 | 2026-10-02 | 90SS+5d | 0d |  |  | Veks | 64h |
| 92 | 3.2.5.4 | Pintura com Stain das Madeiras Pinus |  | 8d | 2026-09-23 | 2026-10-02 | 89SS+5d | 0d |  |  | Veks | 64h |
| 93 | 3.2.5.5 | Aplicação de Resina Sobre Pedra Moledo |  | 8d | 2026-08-18 | 2026-08-27 | 74 | 26d |  |  | Veks | 64h |
| 94 | 3.2.6 | **Elétrica** |  | 10d | 2026-09-16 | 2026-09-29 |  | 3d |  |  |  | 80h |
| 95 | 3.2.6.1 | Execução 1 Ponto de Iluminação por Baia |  | 5d | 2026-09-16 | 2026-09-22 | 87 | 3d | 0d |  | Veks | 40h |
| 96 | 3.2.6.2 | Execução 1 Ponto de Elétrica em Cada Pilar |  | 5d | 2026-09-23 | 2026-09-29 | 95 | 3d |  |  | Veks | 40h |
| 97 | 3.2.7 | **Execução Portão das Baias** |  | 35d | 2026-08-03 | 2026-09-18 |  | 0d |  |  |  | 256h |
| 98 | 3.2.7.1 | Produção dos Portões | manual | 20d | 2026-08-03 | 2026-08-28 |  |  |  | start no earlier than 2026-08-03 | Veks | 160h |
| 99 | 3.2.7.2 | Instalação dos Portões |  | 12d | 2026-09-03 | 2026-09-18 | 78 | 10d |  |  | Veks | 96h |
| 100 | 4 | **Desmobilização** |  | 4d | 2026-10-05 | 2026-10-08 |  | 0d |  |  |  | 32h |
| 101 | 4.1 | Limpeza Geral |  | 2d | 2026-10-05 | 2026-10-06 | 54 | 0d |  |  | Veks | 16h |
| 102 | 4.2 | Desmobilização |  | 2d | 2026-10-07 | 2026-10-08 | 101 | 0d |  |  | Veks | 16h |
