# Obra Itu - Baias Fazenda Santa Mônica

Schedule from MS Project, 2026-06-08 to 2026-10-19, A marks actual dates.

## Calendars

- Padrão: Mon-Fri 08:00-12:00, 13:00-17:00; Sat-Sun off.

## Resources

| Resource |
| --- |
| Ana |
| Equipe Veks |
| Paulo |
| João 3o |
| Priscila |
| Alan |
| Guilherme |
| Fazenda |
| Veks |
| AJR |
| AJR (Veks) |

## Schedule

| ID | WBS | Task | Type | Duration | Start | Finish | Predecessors | Complete | Remaining | Total slack | Free slack | Constraint | Resources | Work | Actual work |
| --- | --- | --- | --- | --- | --- | --- | --- | --- | --- | --- | --- | --- | --- | --- | --- |
| 1 | 1 | **Mobilização** |  | 18d | 2026-06-08 A | 2026-07-01 A |  | 100% |  |  |  |  |  | 112h | 112h |
| 2 | 1.1 | Estudo de Solo SPT |  | 1d | 2026-06-11 A | 2026-06-11 A |  | 100% |  |  |  |  | João 3o | 8h | 8h |
| 3 | 1.2 | Execução de projetos LSF, Telhado, Piso, Baldrame, Fundação para Pilares de Madeira |  | 9d | 2026-06-08 A | 2026-06-18 A |  | 100% |  |  |  |  | Priscila | 72h | 72h |
| 4 | 1.3 | Mobilização Equipe |  | 1d | 2026-06-29 A | 2026-06-29 A |  | 100% |  |  |  | start no earlier than 2026-06-29 | Veks | 8h | 8h |
| 5 | 1.4 | Fazenda: Nivelamento dos Platôs | manual | 3d | 2026-06-29 A | 2026-07-01 A |  | 100% |  |  |  |  | Fazenda | 24h | 24h |
| 6 | 2 | **Marcação de Obra** |  | 1d | 2026-06-30 A | 2026-06-30 A |  | 100% |  |  |  |  |  | 8h | 8h |
| 7 | 2.1 | Execução de Gabarito |  | 1d | 2026-06-30 A | 2026-06-30 A |  | 100% |  |  |  | start no earlier than 2026-06-30 | Veks | 8h | 8h |
| 8 | 3 | **Baias** |  | 78d | 2026-06-30 A | 2026-10-15 |  | 22% | 60.88d | 2d |  |  |  | 2288h | 276h |
| 9 | 3.1 | **Galpão B** |  | 78d | 2026-06-30 A | 2026-10-15 |  | 30% | 54.39d | 2d |  |  |  | 1216h | 276h |
| 10 | 3.1.1 | **Fundação** |  | 46d | 2026-06-30 A | 2026-09-01 |  | 75% | 11.33d | 34d |  |  |  | 160h | 140h |
| 11 | 3.1.1.1 | Escavação De Fundação Para Baldrames |  | 3d | 2026-07-01 A | 2026-07-03 A | 6 | 100% |  |  |  |  | AJR (Veks) | 24h | 24h |
| 12 | 3.1.1.2 | Escavação Das Brocas |  | 2d | 2026-07-03 A | 2026-07-06 A | 11FF+1d | 100% |  |  |  |  | AJR (Veks) | 16h | 16h |
| 13 | 3.1.1.3 | Execução de Ferragens Para Fundação |  | 10d | 2026-06-30 A | 2026-07-13 A |  | 100% |  |  |  | start no earlier than 2026-06-30 | Veks | 80h | 80h |
| 14 | 3.1.1.4 | Concretagem das Brocas |  | 1d | 2026-07-08 A | 2026-07-08 A | 12FF+2d | 100% |  |  |  |  |  |  |  |
| 15 | 3.1.1.5 | Aplicação Concreto Magro nas Vigas Baldrames |  | 1d | 2026-07-08 A | 2026-07-08 A | 14FF | 100% |  |  |  |  |  |  |  |
| 16 | 3.1.1.6 | Escavação Para Instalação Da Hidraulica | manual | 1d | 2026-07-15 A | 2026-07-15 A |  | 100% |  |  |  | start no earlier than 2026-07-15 | Veks | 8h | 8h |
| 17 | 3.1.1.7 | Entrega das Chapas Base | manual | 1d | 2026-07-17 A | 2026-07-17 A |  | 100% |  |  |  |  |  |  |  |
| 18 | 3.1.1.8 | AJR - Maquinário: Execução De Nivelamento e Compactação das Calçadas | manual | 3d | 2026-07-21 A | 2026-07-23 A |  | 100% |  |  |  |  |  |  |  |
| 19 | 3.1.1.9 | Revisão do Projeto Fundação e LSF - Execução de Cocho em Alvenaria | manual | 3d | 2026-07-28 A | 2026-07-30 A |  | 100% |  |  |  |  |  |  |  |
| 20 | 3.1.1.10 | Fase de Orçamento e Fornecimento de aço para nova fundação |  | 3d | 2026-07-31 A | 2026-08-04 A | 19 | 100% |  |  |  |  |  |  |  |
| 21 | 3.1.1.11 | Execução de Caixaria, Ferragem das Calçadas, posicionamento da armação nas valas e locação das chapas base | manual | 15d | 2026-07-20 A | 2026-08-07 A |  | 100% |  |  |  |  |  |  |  |
| 22 | 3.1.1.12 | Escavação de novas valas e brocas das vigas transversais |  | 2d | 2026-08-05 A | 2026-08-06 A | 19FS+3d | 100% |  |  |  |  |  |  |  |
| 23 | 3.1.1.13 | Execução de armação de ferragem da nova fundação, caixaria e posicionamento da armação nas valas |  | 4d | 2026-08-05 A | 2026-08-10 A | 20 | 100% |  |  |  |  |  |  |  |
| 24 | 3.1.1.14 | Fazenda: Escavação das Valas de Drenagem e Preenchimento 1ª Camada de Material Drenante | manual | 3d | 2026-08-08 A | 2026-08-11 |  | 50% | 1.5d |  |  |  | Fazenda | 24h | 12h |
| 25 | 3.1.1.15 | Aplicação Concreto Magro nas novas vigas e concretagem das brocas novas |  | 1d | 2026-08-12 | 2026-08-12 | 24 |  |  | 43d |  | start no earlier than 2026-08-12 |  |  |  |
| 26 | 3.1.1.16 | Passagem Conduítes Calçada |  | 1d | 2026-08-14 | 2026-08-14 | 27FF |  |  | 41d |  |  |  |  |  |
| 27 | 3.1.1.17 | Execução de Caixaria e Posicionamento da Armação das Vigas Transversais | manual | 4d | 2026-08-11 | 2026-08-14 | 23 |  |  |  |  |  |  |  |  |
| 28 | 3.1.1.18 | Execução de Concretagem Vigas e Calçadas |  | 1d | 2026-08-17 | 2026-08-17 | 27 |  |  | 12d | 0d | start no earlier than 2026-07-10 | Veks | 8h |  |
| 29 | 3.1.1.19 | Execução de Acabamento da Calçada |  | 1d | 2026-08-17 | 2026-08-17 | 28FF |  |  | 24d | 0d |  |  |  |  |
| 30 | 3.1.1.20 | Içamento dos Pilares de Madeira |  | 1d | 2026-08-17 | 2026-08-17 | 28FF |  |  | 40d |  |  |  |  |  |
| 31 | 3.1.1.21 | Execução Bloco de Alvenaria em volto das Toras |  | 3d | 2026-08-25 | 2026-08-27 | 75 |  |  | 28d | 0d |  |  |  |  |
| 32 | 3.1.1.22 | Assentamento Pedra Moledo |  | 3d | 2026-08-28 | 2026-09-01 | 31 |  |  | 28d | 0d |  |  |  |  |

| ID | WBS | Task | Type | Duration | Start | Finish | Predecessors | Complete | Remaining | Total slack | Free slack | Constraint | Resources | Work | Actual work |
| --- | --- | --- | --- | --- | --- | --- | --- | --- | --- | --- | --- | --- | --- | --- | --- |
| 33 | 3.1.2 | **Cobertura** |  | 49d | 2026-07-14 A | 2026-09-18 |  | 28% | 35.34d | 21d |  |  |  | 376h | 136h |
| 34 | 3.1.2.1 | Fabricação de Aço para Pilares |  | 17d | 2026-07-14 A | 2026-08-05 A |  | 100% |  |  |  | finish no earlier than 2026-08-05 | Veks | 136h | 136h |
| 35 | 3.1.2.2 | Execução de Pilares Metálicos |  | 7d | 2026-08-18 | 2026-08-26 | 28 |  |  | 16d | 0d |  | Veks | 56h |  |
| 36 | 3.1.2.3 | Fabricação de Aço para Telhados |  | 7d | 2026-08-17 | 2026-08-25 | 28FS-1d |  |  | 21d | 0d |  |  |  |  |
| 37 | 3.1.2.4 | Execução de Estrutura Metálica para Telhado |  | 7d | 2026-08-26 | 2026-09-03 | 36 |  |  | 21d | 0d |  |  |  |  |
| 38 | 3.1.2.5 | Execução Telhado Shingle |  | 12d | 2026-09-01 | 2026-09-16 | 37SS+4d |  |  | 21d | 0d |  | Veks | 96h |  |
| 39 | 3.1.2.6 | Pintura Estrutura do Telhado |  | 8d | 2026-09-08 | 2026-09-17 | 38SS+5d |  |  | 21d | 0d |  | Veks | 64h |  |
| 40 | 3.1.2.7 | Fazenda: Preenchimento 2ª Camada Material Drenante |  | 3d | 2026-09-16 | 2026-09-18 | 39SS+6d |  |  | 21d |  |  | Fazenda | 24h |  |
| 41 | 3.1.3 | **Execução Estrutura Em LSF para Baias** |  | 17d | 2026-08-11 | 2026-09-02 |  |  |  | 0d |  |  |  | 104h |  |
| 42 | 3.1.3.1 | Painelização de LSF | manual | 5d | 2026-08-11 | 2026-08-17 |  |  |  |  |  |  | Veks | 40h |  |
| 43 | 3.1.3.2 | Verticalização de LSF |  | 8d | 2026-08-24 | 2026-09-02 | 35SS+4d |  |  | 20d | 0d | finish no earlier than 2026-08-07 | Veks | 64h |  |
| 44 | 3.1.4 | **Montagem Infra Elétrica e Hidráulica** |  | 5d | 2026-08-27 | 2026-09-02 |  |  |  | 20d |  |  |  |  |  |
| 45 | 3.1.4.1 | Instalação Infra Hidráulica |  | 5d | 2026-08-27 | 2026-09-02 | 43SS+3d |  |  | 20d | 0d |  |  |  |  |
| 46 | 3.1.4.2 | Instalação Infra Elétrica |  | 5d | 2026-08-27 | 2026-09-02 | 35 |  |  | 19d | 0d |  |  |  |  |
| 47 | 3.1.5 | **Plaqueamento** |  | 31d | 2026-09-03 | 2026-10-15 |  |  |  | 2d |  |  |  | 336h |  |
| 48 | 3.1.5.1 | Plaqueamento Madeira Externa |  | 10d | 2026-09-03 | 2026-09-16 | 43 |  |  | 20d | 0d |  | Veks | 80h |  |
| 49 | 3.1.5.2 | Plaqueamento Cimenticia Interno |  | 8d | 2026-09-03 | 2026-09-14 | 45 |  |  | 20d | 0d |  | Veks | 64h |  |
| 50 | 3.1.5.3 | Aplicação Basecoat |  | 8d | 2026-09-10 | 2026-09-21 | 49SS+5d |  |  | 20d |  |  | Veks | 64h |  |
| 51 | 3.1.5.4 | Pintura com Stain das Madeiras Pinus |  | 8d | 2026-09-10 | 2026-09-21 | 48SS+5d |  |  | 20d |  |  | Veks | 64h |  |
| 52 | 3.1.5.5 | Aplicação de Resina Sobre Pedra Moledo |  | 8d | 2026-10-06 | 2026-10-15 | 99FF |  |  | 2d |  |  | Veks | 64h |  |
| 53 | 3.1.6 | **Elétrica** |  | 10d | 2026-09-03 | 2026-09-16 |  |  |  | 23d |  |  |  | 80h |  |
| 54 | 3.1.6.1 | Execução 1 Ponto de Iluminação por Baia |  | 5d | 2026-09-03 | 2026-09-09 | 46 |  |  | 19d | 0d |  | Veks | 40h |  |
| 55 | 3.1.6.2 | Execução 1 Ponto de Elétrica em Cada Pilar |  | 5d | 2026-09-10 | 2026-09-16 | 54 |  |  | 19d |  |  | Veks | 40h |  |
| 56 | 3.1.7 | **Execução Portão das Baias** |  | 20d | 2026-08-17 | 2026-09-11 |  |  |  | 0d |  |  |  | 160h |  |
| 57 | 3.1.7.1 | Produção dos Portões | manual | 10d | 2026-08-17 | 2026-08-28 |  |  |  |  |  | start no earlier than 2026-08-17 | Veks | 80h |  |
| 58 | 3.1.7.2 | Instalação dos Portões |  | 10d | 2026-08-31 | 2026-09-11 | 57 |  |  | 26d |  |  | Veks | 80h |  |

| ID | WBS | Task | Type | Duration | Start | Finish | Predecessors | Complete | Remaining | Total slack | Free slack | Constraint | Resources | Work |
| --- | --- | --- | --- | --- | --- | --- | --- | --- | --- | --- | --- | --- | --- | --- |
| 59 | 3.2 | **Galpão A** |  | 77d | 2026-07-01 A | 2026-10-15 |  | 13% | 67.14d | 2d | 0d |  |  | 1072h |
| 60 | 3.2.1 | **Fundação** |  | 48d | 2026-07-01 A | 2026-09-04 |  | 58% | 20.27d | 29d |  |  |  |  |
| 61 | 3.2.1.1 | Escavação De Fundação Para Baldrames |  | 3d | 2026-07-01 A | 2026-07-03 A |  | 100% |  |  |  |  |  |  |
| 62 | 3.2.1.2 | Escavação Das Brocas |  | 2d | 2026-07-03 A | 2026-07-06 A |  | 100% |  |  |  |  |  |  |
| 63 | 3.2.1.3 | Execução de Ferragens Para Fundação |  | 1d | 2026-07-07 A | 2026-07-07 A |  | 100% |  |  |  | finish no earlier than 2026-07-07 |  |  |
| 64 | 3.2.1.4 | Concretagem das Brocas |  | 2d | 2026-07-06 A | 2026-07-07 A |  | 100% |  |  |  | finish no earlier than 2026-07-07 |  |  |
| 65 | 3.2.1.5 | Aplicação Concreto Magro nas Vigas Baldrames |  | 8d | 2026-07-14 A | 2026-07-23 A | 13 | 100% |  |  |  | finish no earlier than 2026-07-23 |  |  |
| 66 | 3.2.1.6 | Escavação Para Instalação Da Hidraulica | manual | 1d | 2026-07-08 A | 2026-07-08 A | 14FF | 100% |  |  |  |  |  |  |
| 67 | 3.2.1.7 | Entrega das Chapas Base | manual | 1d | 2026-07-31 A | 2026-07-31 A |  | 100% |  |  |  |  |  |  |
| 68 | 3.2.1.8 | AJR - Maquinário: Execução De Nivelamento e Compactação Das Calçadas |  | 1d | 2026-07-24 A | 2026-07-24 A | 18 | 100% |  |  |  |  |  |  |
| 69 | 3.2.1.9 | Escavação de novas valas e brocas das vigas transversais |  | 2d | 2026-08-07 A | 2026-08-10 A | 22 | 100% |  |  |  |  |  |  |
| 70 | 3.2.1.10 | Execução de armação de ferragem da nova fundação |  | 5d | 2026-08-04 A | 2026-08-10 A | 23FF | 100% |  |  |  |  |  |  |
| 71 | 3.2.1.11 | Aplicação Concreto Magro nas novas vigas e concretagem das brocas novas |  | 1d | 2026-08-12 | 2026-08-12 | 25FF |  |  | 48d |  |  |  |  |
| 72 | 3.2.1.12 | Fazenda: Escavação das Valas de Drenagem e Preenchimento 1ª Camada de Material Drenante |  | 3d | 2026-08-12 | 2026-08-14 | 24 |  |  | 0d |  |  |  |  |
| 73 | 3.2.1.13 | Execução de Caixaria, Ferragem das Calçadas, posicionamento da armação nas valas e locação das chapas base |  | 5d | 2026-08-17 | 2026-08-21 | 72 |  |  | 0d |  |  |  |  |
| 74 | 3.2.1.14 | Passagem Conduítes Calçada |  | 1d | 2026-08-21 | 2026-08-21 | 73FF |  |  | 41d |  |  |  |  |
| 75 | 3.2.1.15 | Execução de Concretagem Vigas, Calçadas e Sapatas |  | 1d | 2026-08-24 | 2026-08-24 | 73 |  |  | 0d |  |  |  |  |
| 76 | 3.2.1.16 | Execução de Acabamento da Calçada |  | 1d | 2026-08-24 | 2026-08-24 | 75FF |  |  | 40d |  |  |  |  |
| 77 | 3.2.1.17 | Içamento dos Pilares de Madeira |  | 1d | 2026-08-24 | 2026-08-24 | 75FF |  |  | 40d |  |  |  |  |
| 78 | 3.2.1.18 | Execução Bloco de Alvenaria em volto das Toras |  | 3d | 2026-08-28 | 2026-09-01 | 31 |  |  | 31d | 0d |  |  |  |
| 79 | 3.2.1.19 | Assentamento Pedra Moledo |  | 3d | 2026-09-02 | 2026-09-04 | 78 |  |  | 31d |  |  |  |  |
| 80 | 3.2.2 | **Cobertura** |  | 43d | 2026-07-17 | 2026-09-15 |  |  |  |  |  |  |  | 376h |
| 81 | 3.2.2.1 | Fabricação de Aço para Pilares |  | 17d | 2026-07-14 | 2026-08-05 | 34FF |  |  | 53d |  | finish no earlier than 2026-08-05 | Veks | 136h |
| 82 | 3.2.2.2 | Execução de Pilares Metálicos |  | 7d | 2026-08-25 | 2026-09-02 | 75 |  |  | 0d |  |  |  |  |
| 83 | 3.2.2.3 | Fabricação de Aço para Telhados |  | 7d | 2026-08-25 | 2026-09-02 | 75 |  |  | 20d | 0d |  | Veks | 56h |
| 84 | 3.2.2.4 | Execução de Estrutura Metálica para Telhado |  | 7d | 2026-09-03 | 2026-09-11 | 83 |  |  | 24d |  |  |  |  |
| 85 | 3.2.2.5 | Execução Telhado Shingle |  | 12d | 2026-08-31 | 2026-09-15 | 83SS+4d |  |  | 20d | 0d |  | Veks | 96h |
| 86 | 3.2.2.6 | Pintura Estrutura do Telhado |  | 8d | 2026-09-07 | 2026-09-16 | 85SS+5d |  |  | 20d | 0d |  | Veks | 64h |
| 87 | 3.2.2.7 | Fazenda: Preenchimento 2ª Camada Material Drenante |  | 3d | 2026-09-15 | 2026-09-17 | 86SS+6d |  |  | 20d |  |  | Fazenda | 24h |

| ID | WBS | Task | Type | Duration | Start | Finish | Predecessors | Total slack | Free slack | Constraint | Resources | Work |
| --- | --- | --- | --- | --- | --- | --- | --- | --- | --- | --- | --- | --- |
| 88 | 3.2.3 | **Execução Estrutura Em LSF para Baias** |  | 23d | 2026-08-10 | 2026-09-09 |  | 0d |  |  |  | 104h |
| 89 | 3.2.3.1 | Painelização de LSF | manual | 5d | 2026-08-10 | 2026-08-14 | 42FF |  |  |  | Veks | 40h |
| 90 | 3.2.3.2 | Verticalização de LSF |  | 8d | 2026-08-31 | 2026-09-09 | 82SS+4d | 0d |  | finish no earlier than 2026-08-07 | Veks | 64h |
| 91 | 3.2.4 | **Montagem Infra Elétrica e Hidráulica** |  | 5d | 2026-09-10 | 2026-09-16 |  | 0d |  |  |  |  |
| 92 | 3.2.4.1 | Instalação Infra Hidráulica |  | 5d | 2026-09-10 | 2026-09-16 | 90 | 21d |  |  |  |  |
| 93 | 3.2.4.2 | Instalação Infra Elétrica |  | 5d | 2026-09-10 | 2026-09-16 | 90 | 0d |  |  |  |  |
| 94 | 3.2.5 | **Plaqueamento** |  | 21d | 2026-09-17 | 2026-10-15 |  | 0d |  |  |  | 352h |
| 95 | 3.2.5.1 | Plaqueamento Madeira Externa |  | 10d | 2026-09-17 | 2026-09-30 | 93 | 0d |  |  | Veks | 80h |
| 96 | 3.2.5.2 | Plaqueamento Cimenticia Interno |  | 8d | 2026-09-17 | 2026-09-28 | 93 | 6d | 0d |  | Veks | 64h |
| 97 | 3.2.5.3 | Aplicação Basecoat |  | 10d | 2026-09-24 | 2026-10-07 | 96SS+5d | 6d |  |  | Veks | 80h |
| 98 | 3.2.5.4 | Pintura com Stain das Madeiras Pinus |  | 8d | 2026-09-24 | 2026-10-05 | 95SS+5d | 0d |  |  | Veks | 64h |
| 99 | 3.2.5.5 | Aplicação de Resina Sobre Pedra Moledo |  | 8d | 2026-10-06 | 2026-10-15 | 98 | 0d |  |  | Veks | 64h |
| 100 | 3.2.6 | **Elétrica** |  | 10d | 2026-09-17 | 2026-09-30 |  | 11d |  |  |  | 80h |
| 101 | 3.2.6.1 | Execução 1 Ponto de Iluminação por Baia |  | 5d | 2026-09-17 | 2026-09-23 | 93 | 11d | 0d |  | Veks | 40h |
| 102 | 3.2.6.2 | Execução 1 Ponto de Elétrica em Cada Pilar |  | 5d | 2026-09-24 | 2026-09-30 | 101 | 11d |  |  | Veks | 40h |
| 103 | 3.2.7 | **Execução Portão das Baias** |  | 43d | 2026-08-17 | 2026-10-14 |  | 1d |  |  |  | 160h |
| 104 | 3.2.7.1 | Produção dos Portões |  | 10d | 2026-08-17 | 2026-08-28 | 57FF | 34d |  | start no earlier than 2026-07-27 | Veks | 80h |
| 105 | 3.2.7.2 | Instalação dos Portões |  | 10d | 2026-10-01 | 2026-10-14 | 95 | 1d |  |  | Veks | 80h |
| 106 | 4 | **Desmobilização** |  | 2d | 2026-10-16 | 2026-10-19 |  | 0d |  |  |  | 16h |
| 107 | 4.1 | Limpeza Geral |  | 1d | 2026-10-16 | 2026-10-16 | 59 | 0d |  |  | Veks | 8h |
| 108 | 4.2 | Desmobilização |  | 1d | 2026-10-19 | 2026-10-19 | 107 | 0d |  |  | Veks | 8h |
