Schedule from MS Project, 2026-06-08 to 2026-10-08, A marks actual dates.

## Calendars

- Padrão: Mon-Fri 08:00-12:00, 13:00-17:00; Sat-Sun off.

## Resources

| Resource |
| --- |
| Ana |
| Equipe Veks |
| Paulo |
| João 3o |
| Priscila |
| Alan |
| Guilherme |
| Fazenda |
| Veks |
| AJR |
| AJR (Veks) |

## Schedule

| ID | WBS | Task | Type | Duration | Start | Finish | Predecessors | Complete | Remaining | Total slack | Free slack | Constraint | Resources | Work | Actual work |
| --- | --- | --- | --- | --- | --- | --- | --- | --- | --- | --- | --- | --- | --- | --- | --- |
| 1 | 1 | **OBRA ITU - BAIAS FAZENDA SANTA MÔNICA** |  | 89d | 2026-06-08 A | 2026-10-08 |  | 3% | 86.26d | 0d |  |  |  | 2592h | 80h |
| 2 | 1.1 | **MOBILIZAÇÃO** |  | 18d | 2026-06-08 A | 2026-07-01 |  | 71% | 5.14d | 71d |  |  |  | 112h | 80h |
| 3 | 1.1.1 | ESTUDO DE SOLO SPT |  | 1d | 2026-06-11 A | 2026-06-11 A |  | 100% |  |  |  |  | João 3o | 8h | 8h |
| 4 | 1.1.2 | EXECUÇÃO DE PROJETOS. LSF, TELHADO, PISO, BALDRAME, FUNDAÇÃO PARA PILARES DE MADEIRA |  | 9d | 2026-06-08 A | 2026-06-18 A |  | 100% |  |  |  |  | Priscila | 72h | 72h |
| 5 | 1.1.3 | MOBILIZAÇÃO EQUIPE |  | 1d | 2026-06-29 | 2026-06-29 |  |  |  | 73d |  | start no earlier than 2026-06-29 | Veks | 8h |  |
| 6 | 1.1.4 | FAZENDA: NIVELAMENTO DO PLATÔ | manual | 3d | 2026-06-29 | 2026-07-01 |  |  |  |  |  |  | Fazenda | 24h |  |
| 7 | 1.2 | **BAIAS** |  | 74d | 2026-06-29 | 2026-10-08 |  |  |  | 0d |  |  |  | 2480h |  |
| 8 | 1.2.1 | **MARCAÇÃO DE OBRA** |  | 1d | 2026-06-30 | 2026-06-30 |  |  |  | 62d | 0d |  |  | 8h |  |
| 9 | 1.2.1.1 | EXECUÇÃO DE GABARITO |  | 1d | 2026-06-30 | 2026-06-30 |  |  |  | 62d |  | start no earlier than 2026-06-30 | Veks | 8h |  |
| 10 | 1.2.2 | **FUNDAÇÃO** |  | 35d | 2026-06-29 | 2026-08-14 |  |  |  | 0d |  |  |  | 432h |  |
| 11 | 1.2.2.1 | ESCAVAÇÃO DE FUNDAÇÃO PARA BALDRAMES |  | 5d | 2026-07-01 | 2026-07-07 | 8 |  |  | 62d | 0d |  | AJR (Veks) | 40h |  |
| 12 | 1.2.2.2 | ESCAVAÇÃO DE SAPATAS PARA PILARES |  | 4d | 2026-07-02 | 2026-07-07 |  |  |  | 67d |  | start no earlier than 2026-07-02 | AJR (Veks) | 32h |  |
| 13 | 1.2.2.3 | ESCAVAÇÃO PARA INSTALAÇÃO DA HIDRAULICA |  | 1d | 2026-07-07 | 2026-07-07 |  |  |  | 67d |  | start no earlier than 2026-07-07 | Veks | 8h |  |
| 14 | 1.2.2.4 | ESCAVAÇÃO DAS BROCAS | manual | 2d | 2026-07-06 | 2026-07-07 |  |  |  |  |  |  | AJR (Veks) | 16h |  |
| 15 | 1.2.2.5 | EXECUÇÃO DE FERRAGENS PARA FUNDAÇÃO |  | 17d | 2026-06-29 | 2026-07-21 |  |  |  | 0d |  | start no earlier than 2026-06-29 | Veks | 136h |  |
| 16 | 1.2.2.6 | EXECUÇÃO DE TUBULAÇÃO HIDRAULICA |  | 5d | 2026-07-08 | 2026-07-14 | 11 |  |  | 62d |  |  | Veks | 40h |  |
| 17 | 1.2.2.7 | CONCRETAGEM DAS BROCAS |  | 1d | 2026-07-08 | 2026-07-08 | 11 |  |  | 66d |  |  | Veks | 8h |  |
| 18 | 1.2.2.8 | EXECUÇÃO DE CONCRETAGEM DAS VIGAS |  | 1d | 2026-07-22 | 2026-07-22 | 15 |  |  | 0d |  |  | Veks | 8h |  |
| 19 | 1.2.2.9 | FAZENDA: ESCAVAÇÃO DAS VALAS DE DRENAGEM E PREENCHIMENTO 1ª CAMADA DE MATERIAL DRENANTE |  | 7d | 2026-07-23 | 2026-07-31 | 18 |  |  | 0d |  |  | Fazenda | 56h |  |
| 20 | 1.2.2.10 | IÇAMENTO DOS PILARES DE MADEIRA |  | 1d | 2026-08-03 | 2026-08-03 | 19 |  |  | 48d |  |  | Veks | 8h |  |
| 21 | 1.2.2.11 | EXECUÇÃO DE CONCRETAGEM DAS CALÇADAS E SAPATAS PILARES TRONCO |  | 2d | 2026-08-03 | 2026-08-04 | 19 |  |  | 0d |  |  | Veks | 16h |  |
| 22 | 1.2.2.12 | EXECUÇÃO DE ACABAMENTO DA CALÇADA (À SER DEFINIDO) |  | 1d | 2026-08-05 | 2026-08-05 | 21 |  |  | 46d |  |  |  |  |  |
| 23 | 1.2.2.13 | EXECUÇÃO DE BLOCO DE ALVENARIA EM VOLTO DAS TORAS |  | 3d | 2026-08-05 | 2026-08-07 | 21 |  |  | 39d | 0d |  | Veks | 24h |  |
| 24 | 1.2.2.14 | ASSENTAMENTO DE PEDRA MOLEDO |  | 5d | 2026-08-10 | 2026-08-14 | 23 |  |  | 39d |  |  | Veks | 40h |  |

| ID | WBS | Task | Type | Duration | Start | Finish | Predecessors | Total slack | Free slack | Constraint | Resources | Work |
| --- | --- | --- | --- | --- | --- | --- | --- | --- | --- | --- | --- | --- |
| 25 | 1.2.3 | **EXECUÇÃO DE ESTRUTURA EM LSF PARA BAIAS** |  | 30d | 2026-07-06 | 2026-08-14 |  | 0d |  |  |  | 128h |
| 26 | 1.2.3.1 | PAINELIZAÇÃO DE LSF BAIAS | manual | 8d | 2026-07-06 | 2026-07-15 |  |  |  |  | Veks | 64h |
| 27 | 1.2.3.2 | VERTICALIZAÇÃO DE LSF BAIA 01 |  | 4d | 2026-08-05 | 2026-08-10 | 21 | 0d |  | start no earlier than 2026-07-01 | Veks | 32h |
| 28 | 1.2.3.3 | VERTICALIZAÇÃO DE LSF BAIA 02 |  | 4d | 2026-08-11 | 2026-08-14 | 27 | 0d |  |  | Veks | 32h |
| 29 | 1.2.4 | **COBERTURA** |  | 68d | 2026-07-06 | 2026-10-07 |  | 1d |  |  |  | 816h |
| 30 | 1.2.4.1 | FABRICAÇÃO DE AÇO PARA TELHADO |  | 20d | 2026-07-06 | 2026-07-31 |  | 49d |  | start no earlier than 2026-07-06 | Veks | 160h |
| 31 | 1.2.4.2 | EXECUÇÃO DE ESTRUTURA METÁLICA PARA TELHADO BAIA 01 |  | 15d | 2026-08-11 | 2026-08-31 | 27 | 5d | 0d |  | Veks | 120h |
| 32 | 1.2.4.3 | EXECUÇÃO DE ESTRUTURA METÁLICA PARA TELHADO BAIA 02 |  | 15d | 2026-08-17 | 2026-09-04 | 28 | 1d | 0d |  | Veks | 120h |
| 33 | 1.2.4.4 | EXECUÇÃO DE TELHADO SINGLE BAIA 01 |  | 15d | 2026-09-01 | 2026-09-21 | 31 | 5d | 0d |  | Veks | 120h |
| 34 | 1.2.4.5 | FAZENDA: PREENCHIMENTO 2ª CAMADA MATERIAL DRENANTE BAIA 01 | manual | 3d | 2026-09-18 | 2026-09-22 |  |  |  |  | Fazenda | 24h |
| 35 | 1.2.4.6 | EXECUÇÃO DE TELHADO SINGLE BAIA 02 |  | 15d | 2026-09-07 | 2026-09-25 | 32 | 1d | 0d |  | Veks | 120h |
| 36 | 1.2.4.7 | FAZENDA: PREENCHIMENTO 2ª CAMADA MATERIAL DRENANTE BAIA 02 | manual | 3d | 2026-09-24 | 2026-09-28 |  |  |  |  | Fazenda | 24h |
| 37 | 1.2.4.8 | PINTURA DE ESTRUTURA DO TELHADO BAIA 01 |  | 8d | 2026-09-22 | 2026-10-01 | 33 | 5d |  |  | Veks | 64h |
| 38 | 1.2.4.9 | PINTURA DE ESTRUTURA DO TELHADO BAIA 02 |  | 8d | 2026-09-28 | 2026-10-07 | 35 | 1d |  | start no earlier than 2026-08-24 | Veks | 64h |
| 39 | 1.2.5 | **PLAQUEAMENTO** |  | 26d | 2026-08-11 | 2026-09-15 |  | 4d |  |  |  | 608h |
| 40 | 1.2.5.1 | PLAQUEAMENTO MADEIRA EXTERNA DA BAIA 01 |  | 8d | 2026-08-11 | 2026-08-20 | 27 | 27d | 0d |  | Veks | 64h |
| 41 | 1.2.5.2 | PLAQUEAMENTO MADEIRA EXTERNA DA BAIA 02 |  | 8d | 2026-08-17 | 2026-08-26 | 28 | 0d |  |  | Veks | 64h |
| 42 | 1.2.5.3 | PLAQUEAMENTO CIMENTICIA INTERNO DA BAIA 01 |  | 8d | 2026-08-11 | 2026-08-20 | 27 | 17d | 0d |  | Veks | 64h |
| 43 | 1.2.5.4 | PLAQUEAMENTO CIMENTICIA INTERNO DA BAIA 02 |  | 8d | 2026-08-21 | 2026-09-01 | 42 | 17d | 0d |  | Veks | 64h |
| 44 | 1.2.5.5 | EXECUÇÃO DE BASECOAT BAIA 01 |  | 10d | 2026-08-21 | 2026-09-03 | 42 | 25d |  |  | Veks | 80h |
| 45 | 1.2.5.6 | EXECUÇÃO DE BASECOAT BAIA 02 |  | 10d | 2026-09-02 | 2026-09-15 | 43 | 17d |  |  | Veks | 80h |
| 46 | 1.2.5.7 | PINTURA COM STAIN DAS MADEIRAS PINUS BAIA 01 |  | 8d | 2026-08-21 | 2026-09-01 | 40 | 27d |  |  | Veks | 64h |
| 47 | 1.2.5.8 | PINTURA COM STAIN DAS MADEIRAS PINUS BAIA 02 |  | 8d | 2026-08-27 | 2026-09-07 | 41 | 23d |  |  | Veks | 64h |
| 48 | 1.2.5.9 | APLICAÇÃO DE RESINA SOBRE PEDRA MODELO |  | 8d | 2026-08-21 | 2026-09-01 | 42 | 27d |  |  | Veks | 64h |

| ID | WBS | Task | Duration | Start | Finish | Predecessors | Total slack | Constraint | Resources | Work |
| --- | --- | --- | --- | --- | --- | --- | --- | --- | --- | --- |
| 49 | 1.2.6 | **ELÉTRICA** | 5d | 2026-09-01 | 2026-09-07 |  | 23d |  |  | 80h |
| 50 | 1.2.6.1 | EXECUÇÃO DE 1 PONTO DE ILUMINAÇÃO POR BAIA | 5d | 2026-09-01 | 2026-09-07 | 31 | 23d |  | Veks | 40h |
| 51 | 1.2.6.2 | EXECUÇÃO DE 1 PONTO DE ELÉTRICA EM CADA PILAR | 5d | 2026-09-01 | 2026-09-07 | 31 | 23d |  | Veks | 40h |
| 52 | 1.2.7 | **EXECUÇÃO DE PORTÃO DAS BAIAS** | 68d | 2026-06-29 | 2026-09-30 |  | 6d |  |  | 360h |
| 53 | 1.2.7.1 | PRODUÇÃO DOS PORTÕES | 20d | 2026-06-29 | 2026-07-24 |  | 54d | start no earlier than 2026-06-29 | Veks | 160h |
| 54 | 1.2.7.2 | INSTALAÇÃO DOS PORTÕES | 25d | 2026-08-27 | 2026-09-30 | 41 | 0d |  | Veks | 200h |
| 55 | 1.2.8 | LIMPEZA GERAL | 3d | 2026-10-01 | 2026-10-05 | 54 | 0d |  | Veks | 24h |
| 56 | 1.2.9 | DESMOBILIZAÇÃO | 3d | 2026-10-06 | 2026-10-08 | 55 | 0d |  | Veks | 24h |
