Schedule from MS Project, 2026-06-08 to 2026-11-26.

## Calendars

- Padrão: Mon-Fri 08:00-12:00, 13:00-17:00; Sat-Sun off.

## Resources

| Resource |
| --- |
| Ana |
| Equipe Veks |
| Paulo |
| João 3o |
| Priscila |
| Alan |
| Guilherme |

## Schedule

| ID | WBS | Task | Type | Duration | Start | Finish | Predecessors | Total slack | Resources | Work |
| --- | --- | --- | --- | --- | --- | --- | --- | --- | --- | --- |
| 1 | 1 | **MOBILIZAÇÃO** |  | 14d | 2026-06-08 | 2026-06-25 |  | 0d |  | 320h |
| 2 | 1.1 | PROPOSTA ENCARREGADO | manual | 1d | 2026-06-10 | 2026-06-10 |  |  | Guilherme | 8h |
| 3 | 1.2 | ESTUDO DE SOLO SPT | manual | 1d | 2026-06-11 | 2026-06-11 |  |  | João 3o | 8h |
| 4 | 1.3 | EXECUÇÃO DE PROJETOS. LSF, TELHADO, PISO, BALDRAME, FUNDAÇÃO PARA PILARES DE MADEIRA | manual | 9d | 2026-06-08 | 2026-06-18 |  |  | Priscila | 72h |
| 5 | 1.4 | CHECK LIST DE FERRAMENTES PARA MOBILIZAÇÃO | manual | 3d | 2026-06-10 | 2026-06-12 |  |  | Paulo | 24h |
| 6 | 1.5 | CHECK LIST DE ATIVIDADES PARA MOBILIZAÇÃO | manual | 1d | 2026-06-10 | 2026-06-10 |  |  | Paulo | 8h |
| 7 | 1.6 | CONTRATAÇÃO DE EQUIPE CIVIL | manual | 5d | 2026-06-11 | 2026-06-17 |  |  | Equipe Veks | 40h |
| 8 | 1.7 | CONTRATAÇÃO DE EQUIPE DE SERRALHERIA | manual | 5d | 2026-06-11 | 2026-06-17 |  |  | Equipe Veks | 40h |
| 9 | 1.8 | VALIDAÇÃO DO ORÇAMENTO FUNDAÇÃO | manual | 3d | 2026-06-10 | 2026-06-12 |  |  | Alan | 24h |
| 10 | 1.9 | VALIDAÇÃO DO ORÇAMENTO GERAL | manual | 5d | 2026-06-19 | 2026-06-25 | 4 |  | Equipe Veks | 40h |
| 11 | 1.10 | ALUGUEL DE CASA / HOTEL | manual | 7d | 2026-06-09 | 2026-06-17 |  |  | Ana | 56h |
| 12 | 1.11 | MOBILIZAÇÃO EQUIPE | manual | 2d | 2026-06-21 | 2026-06-22 |  |  |  |  |
| 13 | 2 | **BAIAS** |  | 124d | 2026-06-08 | 2026-11-26 |  | 0d |  |  |
| 14 | 2.1 | MARCAÇÃO DE OBRA | manual | 3d | 2026-06-22 | 2026-06-24 |  |  |  |  |
| 15 | 2.2 | Contratar topografo ? | manual | 1d? | 2026-06-08 | 2026-06-08 |  |  |  |  |
| 16 | 2.3 | ESCAVAÇÃO DE SAPATAS PARA PILARES | manual | 7d | 2026-06-25 | 2026-07-03 | 14 |  |  |  |
| 17 | 2.4 | Ferramentas | manual | 1d? | 2026-06-08 | 2026-06-08 |  |  |  |  |
| 18 | 2.5 | Máquina ? | manual | 1d? | 2026-06-08 | 2026-06-08 |  |  |  |  |
| 19 | 2.6 | ESCAVAÇÃO DE FUNDAÇÃO PARA BALDRAMES | manual | 7d | 2026-06-25 | 2026-07-03 | 14 |  |  |  |
| 20 | 2.7 | Maquina para escavar o baldrame | manual | 1d? | 2026-06-08 | 2026-06-08 |  |  |  |  |
| 21 | 2.8 | EXECUÇÃO DE CAIXARIA PARA PISO DE CONCRETO E VIGAS BALDRAME | manual | 10d | 2026-07-06 | 2026-07-17 | 19 |  |  |  |
| 22 | 2.9 | EXECUÇÃO DE FERRAGENS PARA FUNDAÇÃO | manual | 10d | 2026-07-06 | 2026-07-17 | 16 |  |  |  |
| 23 | 2.10 | EXECUÇÃO DE CAIXARIA | manual | 7d | 2026-07-06 | 2026-07-14 | 19 |  |  |  |
| 24 | 2.11 | EXECUÇÃO DE CONCRETAGEM DAS FUNDAÇÕES | manual | 3d | 2026-07-15 | 2026-07-17 | 23 |  |  |  |
| 25 | 2.12 | EXECUÇÃO DE CONCRETAGEM DAS CALÇADAS | manual | 3d | 2026-07-20 | 2026-07-22 | 24 |  |  |  |
| 26 | 2.13 | IÇAMENTO DOS PILARES DE MADEIRA | manual | 3d | 2026-07-20 | 2026-07-22 | 24 |  |  |  |
| 27 | 2.14 | FABRICAÇÃO DE AÇO PARA TELHADO | manual | 30d | 2026-06-19 | 2026-07-30 | 4 |  |  |  |
| 28 | 2.15 | EXECUÇÃO DE ESTRUTURA METÁLICA PARA TELHADO | manual | 40d | 2026-07-31 | 2026-09-24 | 27 |  |  |  |
| 29 | 2.16 | EXECUÇÃO DE ESTRUTURA EM LSF PARA BAIAS | manual | 1d | 2026-06-08 | 2026-06-08 |  |  |  |  |
| 30 | 2.17 | PAINELIZAÇÃO DE LSF | manual | 8d | 2026-07-20 | 2026-07-29 | 24 |  |  |  |
| 31 | 2.18 | VERTICALIZAÇÃO DE LSF | manual | 8d | 2026-07-30 | 2026-08-10 | 30 |  |  |  |
| 32 | 2.19 | CHAPEAMENTO EXTERNO DAS BAIAS | manual | 9d | 2026-08-11 | 2026-08-21 | 31 |  |  |  |
| 33 | 2.20 | CHAPEAMENTO INTERNO DA BAIAS | manual | 9d | 2026-08-24 | 2026-09-03 | 32 |  |  |  |
| 34 | 2.21 | EXECUÇÃO DE BASECOAT | manual | 15d | 2026-09-04 | 2026-09-24 | 33 |  |  |  |
| 35 | 2.22 | PINTURA COM STAIN DAS MADEIRAS PINUS | manual | 10d | 2026-08-24 | 2026-09-04 | 32 |  |  |  |
| 36 | 2.23 | EXECUÇÃO DE PEDRA MOLEDO | manual | 20d | 2026-07-31 | 2026-08-27 | 27 |  |  |  |
| 37 | 2.24 | APLICAÇÃO DE RESINA SOBRE PEDRA MODELO | manual | 5d | 2026-08-28 | 2026-09-03 | 36 |  |  |  |
| 38 | 2.25 | EXECUÇÃO DE 1 PONTO DE ILUMINAÇÃO POR BAIA | manual | 5d | 2026-09-25 | 2026-10-01 | 28 |  |  |  |
| 39 | 2.26 | EXECUÇÃO DE 1 PONTO DE ELÉTRICA EM CADA PILAR | manual | 5d | 2026-10-02 | 2026-10-08 | 38 |  |  |  |
| 40 | 2.27 | PINTURA DE ESTRUTURA DO TELHADO | manual | 15d | 2026-11-06 | 2026-11-26 | 42 |  |  |  |
| 41 | 2.28 | EXECUÇÃO DE PORTÃO DAS BAIAS | manual | 40d | 2026-06-25 | 2026-08-19 | 14 |  |  |  |
| 42 | 2.29 | EXECUÇÃO DE TELHADO SINGLE | manual | 30d | 2026-09-25 | 2026-11-05 | 28 |  |  |  |

| ID | WBS | Task | Type | Duration | Start | Finish | Total slack |
| --- | --- | --- | --- | --- | --- | --- | --- |
| 43 | 2.30 | **ÁREA DE APOIO** |  | 0d | 2026-06-08 | 2026-06-08 | 124d |
| 44 | 2.30.1 | EXECUÇÃO DE PROJETO DE LSF | manual | 1d? | 2026-06-22 | 2026-06-22 |  |
| 45 | 2.30.2 | EXECUÇÃO DE PROJETO DE RADIER | manual | 1d? | 2026-06-22 | 2026-06-22 |  |
| 46 | 2.30.3 | EXECUÇÃO DE PROJETO HIDRÁULICO E ELETRICO | manual | 1d? | 2026-06-22 | 2026-06-22 |  |
| 47 | 2.30.4 | MARCAÇÃO DE OBRA | manual | 1d? | 2026-06-08 | 2026-06-08 |  |
| 48 | 2.30.5 | EXECUÇÃO DE CAIXARIA | manual | 1d? | 2026-06-08 | 2026-06-08 |  |
| 49 | 2.30.6 | EXECUÇÃO DE PONTOS DE INSTALAÇÕES NA FUNDAÇÃO | manual | 1d? | 2026-06-08 | 2026-06-08 |  |
| 50 | 2.30.7 | EXECUÇÃO DE CONCRETAGEM | manual | 1d? | 2026-06-08 | 2026-06-08 |  |
| 51 | 2.30.8 | EXECUÇÃO DE PAINELIZAÇÃO DE LSF | manual | 1d? | 2026-06-08 | 2026-06-08 |  |
| 52 | 2.30.9 | EXECUÇÃO DE VERTICALIZAÇÃO DO LSF | manual | 1d? | 2026-06-08 | 2026-06-08 |  |
